# PROYECTO TAREAS PROCURA

Schedule from MS Project, 2026-06-01 to 2026-07-06, status date 2026-06-08, costs in Bs.S, A marks actual dates.

## Calendars

- Estándar: Mon-Fri 09:00-13:00, 15:00-19:00; Sat-Sun off.

## Resources

| Resource | Rate |
| --- | --- |
| ADMINISTRADOR | 1000 |
| SUPERVISOR | 3000 |
| ALBANIL | 600 |

## Schedule

| ID | WBS | Task | Type | Duration | Start | Finish | Predecessors | Complete | Remaining | Baseline start | Baseline finish | Baseline duration | Total slack | Resources | Work | Actual work | Cost | Baseline cost | Actual cost | FASE | CATEGORIA | IDTAREA |
| --- | --- | --- | --- | --- | --- | --- | --- | --- | --- | --- | --- | --- | --- | --- | --- | --- | --- | --- | --- | --- | --- | --- |
| 1 | 1 | **PROYECTO CIVIL COMPLETO** |  | 26d | 2026-06-01 A | 2026-07-06 |  | 8% | 23.88d |  |  |  | 0d |  | 4832h | 394h | 8,697,600 |  | 709,200 |  |  |  |
| 2 | 1.1 | **FASE 1** |  | 24d | 2026-06-01 A | 2026-07-02 |  | 15% | 20.51d | 2026-06-01 | 2026-07-02 | 24d | 0d |  | 688h | 100h | 1,238,400 | 1,240,900 | 180,000 | RESUMEN | Civil/Estructura |  |
| 3 | 1.1.1 | Excavación y Obras Civiles | manual | 11d | 2026-06-01 A | 2026-06-15 |  | 51% | 5.38d | 2026-06-01 | 2026-06-15 | 11d |  | ALBANIL; SUPERVISOR | 176h | 90h | 316,800 | 317,300 | 162,000 | Fase 1 | Civil/Estructura | T-01 |
| 4 | 1.1.2 | Cimentación de Estructuras | manual | 11d | 2026-06-08 A | 2026-06-20 | 3SS+7d | 6% | 10.38d | 2026-06-08 | 2026-06-20 | 11d |  | ALBANIL; SUPERVISOR | 176h | 10h | 316,800 | 317,300 | 18,000 | Fase 1 | Civil/Estructura | T-02 |
| 5 | 1.1.3 | Montaje de Columnas Metálicas | manual | 9d | 2026-06-15 A | 2026-06-25 | 4SS+7d |  | 9d | 2026-06-15 | 2026-06-25 | 9d |  | ALBANIL; SUPERVISOR | 144h |  | 259,200 | 259,700 |  | Fase 1 | Civil/Estructura | T-03 |
| 6 | 1.1.4 | Instalación de Techo y Cobertura | manual | 7d | 2026-06-22 A | 2026-06-30 | 5SS+7d |  | 7d | 2026-06-22 | 2026-06-30 | 7d |  | ALBANIL; SUPERVISOR | 112h |  | 201,600 | 202,100 |  | Fase 1 | Civil/Estructura | T-04 |
| 7 | 1.1.5 | Canalización de Aguas de Lluvia | manual | 5d | 2026-06-26 A | 2026-07-02 | 6SS+4d |  | 5d | 2026-06-26 | 2026-07-02 | 5d |  | ALBANIL; SUPERVISOR | 80h |  | 144,000 | 144,500 |  | Fase 1 | Civil/Estructura | T-05 |
| 8 | 1.2 | **FASE 2** |  | 23d | 2026-06-02 A | 2026-07-02 |  | 12% | 20.27d | 2026-06-02 | 2026-07-02 | 23d | 0d |  | 624h | 74h | 1,123,200 | 1,125,700 | 133,200 | RESUMEN | Tuberías y Procesos |  |
| 9 | 1.2.1 | Tendido de Tuberías Subterráneas | manual | 13d | 2026-06-02 A | 2026-06-18 | 3SS+1d | 36% | 8.38d | 2026-06-02 | 2026-06-18 | 13d |  | ALBANIL; SUPERVISOR | 208h | 74h | 374,400 | 374,900 | 133,200 | Fase 2 | Tuberías y Procesos | T-06 |
| 10 | 1.2.2 | Conexión de Red de Presión | manual | 7d | 2026-06-12 A | 2026-06-22 | 9SS+10d |  | 7d | 2026-06-12 | 2026-06-22 | 7d |  | ALBANIL; SUPERVISOR | 112h |  | 201,600 | 202,100 |  | Fase 2 | Tuberías y Procesos | T-07 |
| 11 | 1.2.3 | Soldadura de Bridas y Accesorios | manual | 7d | 2026-06-16 A | 2026-06-24 | 10SS+4d |  | 7d | 2026-06-16 | 2026-06-24 | 7d |  | ALBANIL; SUPERVISOR | 112h |  | 201,600 | 202,100 |  | Fase 2 | Tuberías y Procesos | T-08 |
| 12 | 1.2.4 | Montaje de Válvulas de Seccionamiento | manual | 7d | 2026-06-20 A | 2026-06-28 | 11SS+4d |  | 7d | 2026-06-20 | 2026-06-28 | 7d |  | ALBANIL; SUPERVISOR | 112h |  | 201,600 | 202,100 |  | Fase 2 | Tuberías y Procesos | T-09 |
| 13 | 1.2.5 | Pruebas Hidrostáticas de Tuberías | manual | 5d | 2026-06-27 A | 2026-07-02 | 12SS+7d |  | 5d | 2026-06-27 | 2026-07-02 | 5d |  | ALBANIL; SUPERVISOR | 80h |  | 144,000 | 144,500 |  | Fase 2 | Tuberías y Procesos | T-10 |
| 14 | 1.3 | **FASE 3** |  | 21d | 2026-06-05 A | 2026-07-03 |  | 5% | 19.93d | 2026-06-05 | 2026-07-03 | 21d | 0d |  | 512h | 26h | 921,600 | 924,100 | 46,800 | RESUMEN | Electricidad |  |
| 15 | 1.3.1 | Canalización Eléctrica de Paredes | manual | 6d | 2026-06-05 A | 2026-06-12 | 9SS+3d | 27% | 4.38d | 2026-06-05 | 2026-06-12 | 6d |  | ALBANIL; SUPERVISOR | 96h | 26h | 172,800 | 173,300 | 46,800 | Fase 3 | Electricidad | T-11 |
| 16 | 1.3.2 | Cableado de Fuerza y Control | manual | 8d | 2026-06-11 A | 2026-06-20 | 15SS+6d |  | 8d | 2026-06-11 | 2026-06-20 | 8d |  | ALBANIL; SUPERVISOR | 128h |  | 230,400 | 230,900 |  | Fase 3 | Electricidad | T-12 |
| 17 | 1.3.3 | Instalación de Tablero General | manual | 6d | 2026-06-18 A | 2026-06-25 | 16SS+7d |  | 6d | 2026-06-18 | 2026-06-25 | 6d |  | ALBANIL; SUPERVISOR | 96h |  | 172,800 | 173,300 |  | Fase 3 | Electricidad | T-13 |
| 18 | 1.3.4 | Montaje de Transformador de Patio | manual | 6d | 2026-06-22 A | 2026-06-29 | 17SS+4d |  | 6d | 2026-06-22 | 2026-06-29 | 6d |  | ALBANIL; SUPERVISOR | 96h |  | 172,800 | 173,300 |  | Fase 3 | Electricidad | T-14 |
| 19 | 1.3.5 | Pruebas de Aislamiento y Megado | manual | 6d | 2026-06-28 A | 2026-07-03 | 18SS+6d |  | 6d | 2026-06-28 | 2026-07-03 | 6d |  | ALBANIL; SUPERVISOR | 96h |  | 172,800 | 173,300 |  | Fase 3 | Electricidad | T-15 |
| 20 | 1.4 | **FASE 4** |  | 18d | 2026-06-10 A | 2026-07-05 |  |  | 18d | 2026-06-10 | 2026-07-05 | 18d | 0d |  | 464h |  | 835,200 | 837,700 |  | RESUMEN | Acabados y Entrega |  |
| 21 | 1.4.1 | Preparación de Superficies de Concreto | manual | 5d | 2026-06-10 A | 2026-06-16 | 4SS+2d |  | 5d | 2026-06-10 | 2026-06-16 | 5d |  | ALBANIL; SUPERVISOR | 80h |  | 144,000 | 144,500 |  | Fase 4 | Acabados y Entrega | T-16 |
| 22 | 1.4.2 | Aplicación de Pintura Epóxica en Pisos | manual | 6d | 2026-06-15 A | 2026-06-22 | 21SS+5d |  | 6d | 2026-06-15 | 2026-06-22 | 6d |  | ALBANIL; SUPERVISOR | 96h |  | 172,800 | 173,300 |  | Fase 4 | Acabados y Entrega | T-17 |
| 23 | 1.4.3 | Sellado de Juntas y Ventanales | manual | 7d | 2026-06-21 A | 2026-06-27 | 22SS+6d |  | 7d | 2026-06-21 | 2026-06-27 | 7d |  | ALBANIL; SUPERVISOR | 112h |  | 201,600 | 202,100 |  | Fase 4 | Acabados y Entrega | T-18 |
| 24 | 1.4.4 | Acabados de Fachada y Herrería | manual | 5d | 2026-06-24 A | 2026-06-30 | 23SS+3d |  | 5d | 2026-06-24 | 2026-06-30 | 5d |  | ALBANIL; SUPERVISOR | 80h |  | 144,000 | 144,500 |  | Fase 4 | Acabados y Entrega | T-19 |
| 25 | 1.4.5 | Limpieza General y Entrega de Obra | manual | 6d | 2026-06-29 A | 2026-07-05 | 24SS+5d |  | 6d | 2026-06-29 | 2026-07-05 | 6d |  | ALBANIL; SUPERVISOR | 96h |  | 172,800 | 173,300 |  | Fase 4 | Acabados y Entrega | T-20 |

| ID | WBS | Task | Type | Duration | Start | Finish | Predecessors | Complete | Remaining | Baseline start | Baseline finish | Baseline duration | Total slack | Resources | Work | Actual work | Cost | Baseline cost | Actual cost | FASE | CATEGORIA | IDTAREA |
| --- | --- | --- | --- | --- | --- | --- | --- | --- | --- | --- | --- | --- | --- | --- | --- | --- | --- | --- | --- | --- | --- | --- |
| 26 | 1.5 | **FASE 5** |  | 12d | 2026-06-05 A | 2026-06-22 |  | 8% | 11.07d | 2026-06-05 | 2026-06-22 | 12d | 0d |  | 336h | 26h | 604,800 | 607,300 | 46,800 | RESUMEN | Mantenimiento |  |
| 27 | 1.5.1 | Reparación de Red de Agua | manual | 4d | 2026-06-10 A | 2026-06-14 | 21SS |  | 4d | 2026-06-10 | 2026-06-14 | 4d |  | ALBANIL; SUPERVISOR | 64h |  | 115,200 | 115,700 |  | Fase 5 | Mantenimiento | T-21 |
| 28 | 1.5.2 | Cambio de Válvulas de Vapor | manual | 3d | 2026-06-18 A | 2026-06-22 | 17SS |  | 3d | 2026-06-18 | 2026-06-22 | 3d |  | ALBANIL; SUPERVISOR | 48h |  | 86,400 | 86,900 |  | Fase 5 | Mantenimiento | T-22 |
| 29 | 1.5.3 | Recableado de Oficinas | manual | 4d | 2026-06-05 A | 2026-06-10 | 15SS | 41% | 2.38d | 2026-06-05 | 2026-06-10 | 4d |  | ALBANIL; SUPERVISOR | 64h | 26h | 115,200 | 115,700 | 46,800 | Fase 5 | Mantenimiento | T-23 |
| 30 | 1.5.4 | Pintura de Oficinas Administrativas | manual | 5d | 2026-06-12 A | 2026-06-18 | 29SS+7d |  | 5d | 2026-06-12 | 2026-06-18 | 5d |  | ALBANIL; SUPERVISOR | 80h |  | 144,000 | 144,500 |  | Fase 5 | Mantenimiento | T-24 |
| 31 | 1.5.5 | Refuerzo de Soportería Civil | manual | 5d | 2026-06-15 A | 2026-06-19 | 22SS |  | 5d | 2026-06-15 | 2026-06-19 | 5d |  | ALBANIL; SUPERVISOR | 80h |  | 144,000 | 144,500 |  | Fase 5 | Mantenimiento | T-25 |
| 32 | 1.6 | **FASE 6** |  | 16d | 2026-06-14 A | 2026-07-06 |  |  | 16d | 2026-06-14 | 2026-07-06 | 16d | 0d |  | 464h |  | 835,200 | 837,700 |  | RESUMEN | Ampliación |  |
| 33 | 1.6.1 | Excavación Bloque B | manual | 7d | 2026-06-14 A | 2026-06-22 | 5SS-1d |  | 7d | 2026-06-14 | 2026-06-22 | 7d |  | ALBANIL; SUPERVISOR | 112h |  | 201,600 | 202,100 |  | Fase 6 | Ampliación | T-26 |
| 34 | 1.6.2 | Encofrado de Columnas Bloque B | manual | 7d | 2026-06-20 A | 2026-06-27 | 33SS+6d |  | 7d | 2026-06-20 | 2026-06-27 | 7d |  | ALBANIL; SUPERVISOR | 112h |  | 201,600 | 202,100 |  | Fase 6 | Ampliación | T-27 |
| 35 | 1.6.3 | Vaciado de Concreto de Columnas | manual | 4d | 2026-06-25 A | 2026-06-30 | 34SS+5d |  | 4d | 2026-06-25 | 2026-06-30 | 4d |  | ALBANIL; SUPERVISOR | 64h |  | 115,200 | 115,700 |  | Fase 6 | Ampliación | T-28 |
| 36 | 1.6.4 | Montaje Estructural de Techo | manual | 7d | 2026-06-28 A | 2026-07-04 | 35SS+3d |  | 7d | 2026-06-28 | 2026-07-04 | 7d |  | ALBANIL; SUPERVISOR | 112h |  | 201,600 | 202,100 |  | Fase 6 | Ampliación | T-29 |
| 37 | 1.6.5 | Canalizaciones de Servicio | manual | 4d | 2026-07-01 | 2026-07-06 | 36SS+3d |  |  | 2026-07-01 | 2026-07-06 | 4d |  | ALBANIL; SUPERVISOR | 64h |  | 115,200 | 115,700 |  | Fase 6 | Ampliación | T-30 |
| 38 | 1.7 | **FASE 7** |  | 22d | 2026-06-02 A | 2026-07-01 |  | 19% | 17.88d | 2026-06-02 | 2026-07-01 | 22d | 0d |  | 448h | 84h | 806,400 | 808,900 | 151,200 | RESUMEN | Subestación |  |
| 39 | 1.7.1 | Obras Civiles de Fosa de Aceite | manual | 6d | 2026-06-02 A | 2026-06-09 | 9SS | 77% | 1.38d | 2026-06-02 | 2026-06-09 | 6d |  | ALBANIL; SUPERVISOR | 96h | 74h | 172,800 | 173,300 | 133,200 | Fase 7 | Subestación | T-31 |
| 40 | 1.7.2 | Montaje de Pórtico de Entrada | manual | 6d | 2026-06-08 A | 2026-06-15 | 39SS+6d | 10% | 5.38d | 2026-06-08 | 2026-06-15 | 6d |  | ALBANIL; SUPERVISOR | 96h | 10h | 172,800 | 173,300 | 18,000 | Fase 7 | Subestación | T-32 |
| 41 | 1.7.3 | Tendido de Red de Tierra | manual | 6d | 2026-06-13 A | 2026-06-19 | 40SS+5d |  | 6d | 2026-06-13 | 2026-06-19 | 6d |  | ALBANIL; SUPERVISOR | 96h |  | 172,800 | 173,300 |  | Fase 7 | Subestación | T-33 |
| 42 | 1.7.4 | Conexionado de Tableros Celdas | manual | 6d | 2026-06-20 A | 2026-06-26 | 41SS+7d |  | 6d | 2026-06-20 | 2026-06-26 | 6d |  | ALBANIL; SUPERVISOR | 96h |  | 172,800 | 173,300 |  | Fase 7 | Subestación | T-34 |
| 43 | 1.7.5 | Puestas en Servicio de Equipos | manual | 4d | 2026-06-26 A | 2026-07-01 | 42SS+6d |  | 4d | 2026-06-26 | 2026-07-01 | 4d |  | ALBANIL; SUPERVISOR | 64h |  | 115,200 | 115,700 |  | Fase 7 | Subestación | T-35 |
| 44 | 1.8 | **FASE 8** |  | 9d | 2026-06-15 A | 2026-06-25 |  |  | 9d | 2026-06-15 | 2026-06-25 | 9d | 0d |  | 176h |  | 316,800 | 317,800 |  | RESUMEN | Telecomunicaciones |  |
| 45 | 1.8.1 | Tendido de Fibra Óptica | manual | 6d | 2026-06-15 A | 2026-06-21 | 5SS |  | 6d | 2026-06-15 | 2026-06-21 | 6d |  | ALBANIL; SUPERVISOR | 96h |  | 172,800 | 173,300 |  | Fase 8 | Telecomunicaciones | T-36 |
| 46 | 1.8.2 | Configuración de Racks | manual | 5d | 2026-06-20 A | 2026-06-25 | 45SS+5d |  | 5d | 2026-06-20 | 2026-06-25 | 5d |  | ALBANIL; SUPERVISOR | 80h |  | 144,000 | 144,500 |  | Fase 8 | Telecomunicaciones | T-37 |
| 47 | 1.9 | **FASE 9** |  | 5d | 2026-06-22 A | 2026-06-28 |  |  | 5d | 2026-06-22 | 2026-06-28 | 5d | 0d |  | 96h |  | 172,800 | 173,300 |  | RESUMEN | Seguridad |  |
| 48 | 1.9.1 | Montaje de Cámaras de Vigilancia | manual | 6d | 2026-06-22 A | 2026-06-28 | 33SS |  | 6d | 2026-06-22 | 2026-06-28 | 6d |  | ALBANIL; SUPERVISOR | 96h |  | 172,800 | 173,300 |  | Fase 9 | Seguridad | T-38 |
| 49 | 1.10 | **FASE 10** |  | 8d | 2026-06-18 A | 2026-06-29 |  |  | 8d | 2026-06-18 | 2026-06-29 | 8d | 0d |  | 160h |  | 288,000 | 289,000 |  | RESUMEN | Climatización |  |
| 50 | 1.10.1 | Montaje de Ductos Chiller | manual | 6d | 2026-06-18 A | 2026-06-25 | 17SS |  | 6d | 2026-06-18 | 2026-06-25 | 6d |  | ALBANIL; SUPERVISOR | 96h |  | 172,800 | 173,300 |  | Fase 10 | Climatización | T-39 |
| 51 | 1.10.2 | Conexión Eléctrica de Unidades | manual | 4d | 2026-06-24 A | 2026-06-29 | 50SS+6d |  | 4d | 2026-06-24 | 2026-06-29 | 4d |  | ALBANIL; SUPERVISOR | 64h |  | 115,200 | 115,700 |  | Fase 10 | Climatización | T-40 |

| ID | WBS | Task | Type | Duration | Start | Finish | Predecessors | Complete | Remaining | Baseline start | Baseline finish | Baseline duration | Total slack | Resources | Work | Actual work | Cost | Baseline cost | Actual cost | FASE | CATEGORIA | IDTAREA |
| --- | --- | --- | --- | --- | --- | --- | --- | --- | --- | --- | --- | --- | --- | --- | --- | --- | --- | --- | --- | --- | --- | --- |
| 52 | 1.11 | **FASE 11** |  | 20d | 2026-06-03 A | 2026-06-30 |  | 14% | 17.1d | 2026-06-03 | 2026-06-30 | 20d | 0d |  | 400h | 58h | 720,000 | 722,500 | 104,400 | RESUMEN | Taller |  |
| 53 | 1.11.1 | Construcción de Plataforma de Equipos | manual | 5d | 2026-06-03 A | 2026-06-09 | 39SS+1d | 73% | 1.38d | 2026-06-03 | 2026-06-09 | 5d |  | ALBANIL; SUPERVISOR | 80h | 58h | 144,000 | 144,500 | 104,400 | Fase 11 | Taller | T-41 |
| 54 | 1.11.2 | Montaje de Puentes Grúa | manual | 5d | 2026-06-11 A | 2026-06-17 | 53SS+8d |  | 5d | 2026-06-11 | 2026-06-17 | 5d |  | ALBANIL; SUPERVISOR | 80h |  | 144,000 | 144,500 |  | Fase 11 | Taller | T-42 |
| 55 | 1.11.3 | Instalación de Tomas de Soldar | manual | 5d | 2026-06-16 A | 2026-06-22 | 54SS+5d |  | 5d | 2026-06-16 | 2026-06-22 | 5d |  | ALBANIL; SUPERVISOR | 80h |  | 144,000 | 144,500 |  | Fase 11 | Taller | T-43 |
| 56 | 1.11.4 | Iluminación de Nave Industrial | manual | 7d | 2026-06-21 A | 2026-06-27 | 55SS+5d |  | 7d | 2026-06-21 | 2026-06-27 | 7d |  | ALBANIL; SUPERVISOR | 112h |  | 201,600 | 202,100 |  | Fase 11 | Taller | T-44 |
| 57 | 1.11.5 | Pruebas de Carga Estática | manual | 3d | 2026-06-27 A | 2026-06-30 | 56SS+6d |  | 3d | 2026-06-27 | 2026-06-30 | 3d |  | ALBANIL; SUPERVISOR | 48h |  | 86,400 | 86,900 |  | Fase 11 | Taller | T-45 |
| 58 | 1.12 | **FASE 12** |  | 20d | 2026-06-05 A | 2026-07-02 |  | 6% | 18.88d | 2026-06-05 | 2026-07-02 | 20d | 0d |  | 464h | 26h | 835,200 | 837,700 | 46,800 | RESUMEN | Exteriores |  |
| 59 | 1.12.1 | Construcción de Garita de Acceso | manual | 7d | 2026-06-05 A | 2026-06-15 | 15SS | 23% | 5.38d | 2026-06-05 | 2026-06-15 | 7d |  | ALBANIL; SUPERVISOR | 112h | 26h | 201,600 | 202,100 | 46,800 | Fase 12 | Exteriores | T-46 |
| 60 | 1.12.2 | Pavimentación de Vía de Acceso | manual | 7d | 2026-06-12 A | 2026-06-22 | 59SS+7d |  | 7d | 2026-06-12 | 2026-06-22 | 7d |  | ALBANIL; SUPERVISOR | 112h |  | 201,600 | 202,100 |  | Fase 12 | Exteriores | T-47 |
| 61 | 1.12.3 | Alumbrado Público de Vía | manual | 7d | 2026-06-20 A | 2026-06-27 | 60SS+8d |  | 7d | 2026-06-20 | 2026-06-27 | 7d |  | ALBANIL; SUPERVISOR | 112h |  | 201,600 | 202,100 |  | Fase 12 | Exteriores | T-48 |
| 62 | 1.12.4 | Cercado Perimetral Concertina | manual | 4d | 2026-06-25 A | 2026-06-30 | 61SS+5d |  | 4d | 2026-06-25 | 2026-06-30 | 4d |  | ALBANIL; SUPERVISOR | 64h |  | 115,200 | 115,700 |  | Fase 12 | Exteriores | T-49 |
| 63 | 1.12.5 | Pintura de Demarcación Vial | manual | 4d | 2026-06-29 A | 2026-07-02 | 62SS+4d |  | 4d | 2026-06-29 | 2026-07-02 | 4d |  | ALBANIL; SUPERVISOR | 64h |  | 115,200 | 115,700 |  | Fase 12 | Exteriores | T-50 |
